Schedule from MS Project, 2012-08-13 to 2012-11-05, A marks actual dates.

## Calendars

- 标准: Mon-Fri 08:00-12:00, 13:00-17:00; Sat-Sun off. Exceptions (off unless hours are given): 2012-09-30 08:00-12:00, 13:00-17:00.

## Resources

| Resource |
| --- |
| 张翼鹏 |
| 郭伟 |
| 陈圣标 |
| 罗天 |
| 张卫 |
| 吴非 |
| 彭春雨 |
| 范国连 |
| 赵建伟 |
| 全体 |
| 彭春雨牵头 |
| 张卫牵头 |
| 杨磊 |
| 左应 |
| 周志阳 |
| 蒋建东 |
| 陈佳骏 |
| 秦聪 |
| 金晶林 |
| 杭圣贤 |
| 陈皛 |
| 田雨 |
| 丁玺铭 |
| 龚达 |
| 王纯 |
| 潘志勇 |
| 董昉 |
| 王海 |
| 顾云峰 |
| 杨繁 |
| 唐觅 |
| 刘琦 |
| 包希文(已完成） |
| 余天（已完成) |
| 陈智祎 |
| 金顺艳 |
| 胡瑞鑫 |
| 陈静 |
| 余天 |
| 花林林 |
| 郝斌 |
| 唐觅 |
| 卢秀平 |
| 黄佳 |
| 庄建 |
| 冯瑞祥 |
| 石玲燕 |
| 商务 |
| 郝琳 |
| 邝茹晶 |
| 张懿 |
| 施健 |
| 贾琳 |
| 孟祥磊 |

## Schedule

| ID | WBS | Task | Type | Duration | Start | Finish | Predecessors | Complete | Remaining | Actual start | Total slack | Free slack | Constraint | Resources | Work | Actual work |
| --- | --- | --- | --- | --- | --- | --- | --- | --- | --- | --- | --- | --- | --- | --- | --- | --- |
| 1 | 1 | **市场组9月计划** |  | 57d | 2012-08-20 | 2012-11-05 |  |  | 56.82d | 2012-08-13 |  |  |  | 全体 | 17208h | 46.28h |
| 2 | 1.1 | **准备期** |  | 34d? | 2012-08-27 | 2012-10-10 |  | 1% | 33.78d? | 2012-08-20 |  |  |  | 全体 | 3736h | 12.95h |
| 3 | 1.1.1 | **产品进度跟踪&品质验收** |  | 32d? | 2012-08-27 | 2012-10-08 |  |  |  |  | 0d |  |  | 全体 | 1112h |  |
| 4 | 1.1.1.1 | 完成产品评测标准模版 |  | 2d? | 2012-08-27 | 2012-08-28 |  |  |  |  | 0d |  | must finish on 2012-08-28 | 郝斌 | 16h |  |
| 5 | 1.1.1.2 | 完成客户端与服务器需要配合运营做出修改的需求 | manual | 16d? | 2012-08-27 | 2012-09-17 |  |  |  |  |  |  | finish no earlier than 2012-09-17 | 郝斌; 陈皛; 田雨 | 384h |  |
| 6 | 1.1.1.3 | 跟进产品，确定封测版本是否能够如期完成 |  | 7d? | 2012-09-30 | 2012-10-08 |  |  |  |  | 2d |  | finish no earlier than 2012-10-08 | 郝斌; 黄佳; 陈皛 | 168h |  |
| 7 | 1.1.1.4 | **收费点和货币** |  | 9d? | 2012-08-27 | 2012-09-06 |  |  |  |  | 25d |  |  |  | 144h |  |
| 8 | 1.1.1.4.1 | 完成同类产品货币体系、商城道具类型、定价及其他收费点类型和定价调研 |  | 3d? | 2012-08-27 | 2012-08-29 |  |  |  |  | 24d | 0d | finish no earlier than 2012-08-29 | 郝斌 | 24h |  |
| 9 | 1.1.1.4.2 | 与研发确定货币体系、商城道具和其他收费点研发规划 |  | 3d? | 2012-08-30 | 2012-09-03 | 8 |  |  |  | 24d | 0d | finish no earlier than 2012-08-31 | 黄佳; 郝斌; 陈皛 | 72h |  |
| 10 | 1.1.1.4.3 | 制定《君王II》的货币体系、商城道具类型和定价策略（需与研发配合进行） |  | 3d? | 2012-09-04 | 2012-09-06 | 9 |  |  |  | 24d |  | start no earlier than 2012-09-03 | 郝斌; 陈皛 | 48h |  |
| 11 | 1.1.1.5 | 准备手机与sim卡，配合产品测试 |  | 4d? | 2012-09-24 | 2012-09-27 |  |  |  |  | 9d |  | start no earlier than 2012-09-24 | 黄佳; 郝斌 | 64h |  |
| 12 | 1.1.1.6 | 游戏FAQ文档完成 |  | 5d? | 2012-09-17 | 2012-09-21 |  |  |  |  | 14d |  | finish no earlier than 2012-09-21 | 郝斌; 田雨 | 80h |  |
| 13 | 1.1.2 | **运营需求提出并完成** |  | 13d? | 2012-08-27 | 2012-09-12 |  |  |  |  | 4d |  |  | 黄佳; 郝斌 | 848h |  |
| 14 | 1.1.2.1 | **GM工具** |  | 13d? | 2012-08-27 | 2012-09-12 |  |  |  |  | 21d |  |  |  | 288h |  |
| 15 | 1.1.2.1.1 | GM工具需求提出 |  | 3d? | 2012-08-27 | 2012-08-29 |  |  |  |  | 30d |  | finish no earlier than 2012-08-29 | 黄佳; 庄建 | 48h |  |
| 16 | 1.1.2.1.2 | 确认GM工具需求，明确开发时间点 |  | 2d? | 2012-08-29 | 2012-08-30 |  |  |  |  | 30d |  | finish no earlier than 2012-08-30 | 黄佳; 陈皛 | 32h |  |
| 17 | 1.1.2.1.3 | GM工具验收 |  | 13d? | 2012-08-27 | 2012-09-12 |  |  |  |  | 20d |  | start no earlier than 2012-08-23 | 黄佳; 庄建 | 208h |  |
| 18 | 1.1.2.2 | **数据统计后台** |  | 10d? | 2012-08-27 | 2012-09-07 |  |  |  |  | 24d |  |  |  | 96h |  |
| 19 | 1.1.2.2.1 | 数据统计需求提出 |  | 2d? | 2012-08-27 | 2012-08-28 |  |  |  |  | 23d | 0d | finish no earlier than 2012-08-28 | 黄佳 | 16h |  |
| 20 | 1.1.2.2.2 | 确认数据统计需求，明确开发时间点 |  | 2d | 2012-08-29 | 2012-08-30 | 19 |  |  |  | 23d | 0d | finish no earlier than 2012-08-30 | 黄佳; 陈皛 | 32h |  |
| 21 | 1.1.2.2.3 | 数据统计验收 |  | 6d? | 2012-08-31 | 2012-09-07 | 20 |  |  |  | 23d |  | start no earlier than 2012-08-31 | 黄佳 | 48h |  |
| 22 | 1.1.2.3 | **活动接口需求** |  | 4d? | 2012-09-03 | 2012-09-06 |  |  |  |  | 25d |  |  |  | 56h |  |
| 23 | 1.1.2.3.1 | 根据运营及常规活动需求，制定研发需要提前制作的道具类型和内容 |  | 3d? | 2012-09-03 | 2012-09-05 |  |  |  |  | 26d |  | finish no earlier than 2012-09-05 | 唐觅 | 24h |  |
| 24 | 1.1.2.3.2 | 与研发沟通，确认客户端与服务器配合的时间点 |  | 2d? | 2012-09-05 | 2012-09-06 |  |  |  |  | 25d |  | finish no earlier than 2012-09-06 | 唐觅; 陈皛 | 32h |  |

Notes:
- 5: 针对登录注册、新手引导、游戏UI及系统体验，逐步提出修改建议并跟进改进效果。

| ID | WBS | Task | Type | Duration | Start | Finish | Predecessors | Complete | Remaining | Actual start | Total slack | Free slack | Constraint | Resources | Work | Actual work |
| --- | --- | --- | --- | --- | --- | --- | --- | --- | --- | --- | --- | --- | --- | --- | --- | --- |
| 25 | 1.1.2.4 | **SDK接入需求** |  | 4d? | 2012-08-28 | 2012-08-31 |  |  |  |  | 29d |  |  |  | 48h |  |
| 26 | 1.1.2.4.1 | SDK接入需求提出 |  | 3d? | 2012-08-28 | 2012-08-30 |  |  |  |  | 29d | 0d | finish no earlier than 2012-08-30 | 商务 | 24h |  |
| 27 | 1.1.2.4.2 | 确认接入需求，明确开发时间点 |  | 1d | 2012-08-31 | 2012-08-31 | 26 |  |  |  | 28d |  | finish no earlier than 2012-08-31 | 黄佳; 陈皛; 商务 | 24h |  |
| 28 | 1.1.2.5 | **客户端与服务器风控预案** |  | 6d | 2012-08-31 | 2012-09-07 |  |  |  |  | 0d |  |  |  | 96h |  |
| 29 | 1.1.2.5.1 | 完成封测期间客户端与服务器风险控制方案 | manual | 5d | 2012-08-31 | 2012-09-06 |  |  |  |  |  |  | start no earlier than 2012-08-31 | 黄佳; 陈皛 | 80h |  |
| 30 | 1.1.2.5.2 | 与研发确定方案并确定实现时间 | manual | 1d | 2012-09-07 | 2012-09-07 | 29 |  |  |  |  |  | finish no earlier than 2012-09-07 | 黄佳; 陈皛 | 16h |  |
| 31 | 1.1.2.6 | **CDK生成工具需求** |  | 4d | 2012-09-03 | 2012-09-06 |  |  |  |  |  |  |  |  | 56h |  |
| 32 | 1.1.2.6.1 | CDK生成工具需求提出 |  | 4d? | 2012-09-03 | 2012-09-06 |  |  |  |  | 41d | 0d | finish no earlier than 2012-09-06 | 唐觅 | 32h |  |
| 33 | 1.1.2.6.2 | 确认需求，明确开发时间点 |  | 1d | 2012-09-07 | 2012-09-07 | 32 |  |  |  | 42d |  | finish no earlier than 2012-08-31 | 黄佳; 陈皛; 唐觅 | 24h |  |
| 34 | 1.1.3 | 一些封测需要的功能整理修改 |  | 3d? | 2012-09-10 | 2012-09-12 |  |  |  |  | 36d | 0d | finish no earlier than 2012-09-12 | 全体 | 24h |  |
| 35 | 1.1.4 | 限时注册等新功能需求添加 |  | 2d | 2012-09-13 | 2012-09-14 | 34 |  |  |  | 36d |  | finish no earlier than 2012-09-14 | 黄佳; 陈皛 | 32h |  |
| 36 | 1.1.5 | **封测宣传计划** |  | 12d | 2012-08-24 | 2012-09-10 |  | 2% | 11.77d | 2012-08-20 |  |  |  | 卢秀平; 全体 | 1096h | 12.95h |
| 37 | 1.1.5.1 | 宣传组长熟悉君王II游戏内容 |  | 3d? | 2012-08-27 | 2012-08-29 |  |  |  |  | 48d |  | finish no earlier than 2012-08-29 | 卢秀平 | 24h |  |
| 38 | 1.1.5.2 | **宣传大纲** |  | 3d? | 2012-08-29 | 2012-08-31 |  |  |  |  | 6d |  |  | 卢秀平; 全体 | 72h |  |
| 39 | 1.1.5.2.1 | 初步制定封测宣传大纲 |  | 2d? | 2012-08-29 | 2012-08-30 |  |  |  |  | 6d | 0d | start no earlier than 2012-08-29 | 卢秀平 | 16h |  |
| 40 | 1.1.5.2.2 | 讨论确定大纲内容 |  | 1d | 2012-08-31 | 2012-08-31 | 39 |  |  |  | 6d |  | finish no earlier than 2012-08-31 | 全体 | 8h |  |
| 41 | 1.1.5.3 | **分类宣传准备工作** |  | 13d? | 2012-08-20 A | 2012-09-05 |  | 2% | 12.69d? |  | 3d |  |  | 卢秀平; 全体 | 712h | 12.95h |
| 42 | 1.1.5.3.1 | **资源准备** |  | 13d? | 2012-08-20 A | 2012-09-05 |  | 6% | 12.28d? |  | 3d |  |  |  | 272h | 8h |
| 43 | 1.1.5.3.1.1 | 《君王II》宣传视频制作 | manual | 10d | 2012-08-20 | 2012-08-31 |  |  |  |  |  |  | start no earlier than 2012-08-20 | 冯瑞祥; 石玲燕 | 160h |  |
| 44 | 1.1.5.3.1.2 | 准备男女主角、场景的原画需求，并安排制作 |  | 6d? | 2012-08-29 | 2012-09-05 |  |  |  |  | 3d |  | finish no earlier than 2012-09-05 | 顾云峰; 冯瑞祥 | 96h |  |
| 45 | 1.1.5.3.1.3 | 《君王II》著作权申请 | manual | 1d | 2012-08-28 A | 2012-08-28 A |  | 100% |  |  |  |  | finish no earlier than 2012-08-31 | 郝琳 | 8h | 8h |
| 46 | 1.1.5.3.1.4 | 准备ICON和LOGO需求，并安排制制作 |  | 1d? | 2012-08-24 | 2012-08-24 |  |  |  |  | 11d |  |  | 卢秀平 | 8h |  |
| 47 | 1.1.5.3.2 | **官网** |  | 5d | 2012-08-27 | 2012-08-31 |  |  |  |  | 6d |  |  |  | 56h |  |
| 48 | 1.1.5.3.2.1 | 准备WEB、和WAP官网的制作需求，并安排制作 |  | 2d | 2012-08-27 | 2012-08-28 |  |  |  |  | 6d | 0d | start no earlier than 2012-08-27 | 冯瑞祥; 石玲燕 | 32h |  |
| 49 | 1.1.5.3.2.2 | 域名申请及备案 |  | 3d | 2012-08-29 | 2012-08-31 | 48 |  |  |  | 6d |  |  | 商务 | 24h |  |

Notes:
- 45: 大概3月左右出证

| ID | WBS | Task | Type | Duration | Start | Finish | Predecessors | Total slack | Free slack | Constraint | Resources | Work |
| --- | --- | --- | --- | --- | --- | --- | --- | --- | --- | --- | --- | --- |
| 50 | 1.1.5.3.3 | **渠道** |  | 6d? | 2012-08-24 | 2012-08-31 |  | 6d |  |  |  | 56h |
| 51 | 1.1.5.3.3.1 | 商务联系当乐、久游、91、17173、多玩等一线渠道，确定推广位、软文位及渠道活动内容和资源互换条件等内容。 |  | 2d | 2012-08-27 | 2012-08-28 |  | 6d | 0d | start no earlier than 2012-08-27 | 商务 | 16h |
| 52 | 1.1.5.3.3.2 | 根据宣传推广计划，确定专区开设时间。 |  | 3d | 2012-08-29 | 2012-08-31 | 51 | 6d |  |  | 黄佳 | 24h |
| 53 | 1.1.5.3.3.3 | 商务联系其他android、ios和PC的2-3线渠道，争取资源。 |  | 1d? | 2012-08-24 | 2012-08-24 |  | 11d |  |  | 商务 | 8h |
| 54 | 1.1.5.3.3.4 | 配合新闻及活动，确定每个时间点的推广位。 |  | 1d? | 2012-08-24 | 2012-08-24 |  | 11d |  |  | 商务 | 8h |
| 55 | 1.1.5.3.4 | **微博** |  | 6d? | 2012-08-24 | 2012-08-31 |  | 6d |  |  |  | 56h |
| 56 | 1.1.5.3.4.1 | 注册《君王II》官方微博 腾讯、新浪 |  | 2d | 2012-08-27 | 2012-08-28 |  | 6d | 0d | start no earlier than 2012-08-27 | 卢秀平 | 16h |
| 57 | 1.1.5.3.4.2 | 申请微博认证 |  | 3d | 2012-08-29 | 2012-08-31 | 56 | 6d |  |  | 卢秀平 | 24h |
| 58 | 1.1.5.3.4.3 | 购买僵尸粉 |  | 1d? | 2012-08-24 | 2012-08-24 |  | 11d |  |  | 卢秀平 | 8h |
| 59 | 1.1.5.3.4.4 | 专人维护，宣传游戏新闻和活动，并与微博粉丝互动 |  | 1d? | 2012-08-24 | 2012-08-24 |  | 11d |  |  | 卢秀平 | 8h |
| 60 | 1.1.5.3.5 | **QQ&手机** |  | 5d | 2012-08-27 | 2012-08-31 |  | 6d |  |  |  | 64h |
| 61 | 1.1.5.3.5.1 | 建立官方QQ群，安排专人维护 |  | 2d | 2012-08-27 | 2012-08-28 |  | 6d | 0d | start no earlier than 2012-08-27 | 庄建 | 16h |
| 62 | 1.1.5.3.5.2 | 联系君王老玩家和其他手游资深玩家，并让这些玩家帮忙拉人，承诺赠送一些收费道具等 |  | 3d | 2012-08-29 | 2012-08-31 | 61 | 6d |  |  | 唐觅; 庄建 | 48h |
| 63 | 1.1.5.4 | **详细宣传计划** |  | 4d? | 2012-09-03 | 2012-09-06 |  | 1d |  |  | 卢秀平; 全体 | 96h |
| 64 | 1.1.5.4.1 | 细化封测宣传计划 |  | 3d? | 2012-09-03 | 2012-09-05 |  | 2d | 0d | finish no earlier than 2012-09-05 | 卢秀平 | 24h |
| 65 | 1.1.5.4.2 | 讨论确定详细宣传计划 | manual | 1d | 2012-09-06 | 2012-09-06 | 64 |  |  | finish no earlier than 2012-09-06 | 全体 | 8h |
| 66 | 1.1.6 | **封测活动计划** |  | 12d | 2012-08-24 | 2012-09-10 |  |  |  |  | 唐觅; 全体 | 360h |
| 67 | 1.1.6.1 | 活动策划熟悉君王II游戏内容 |  | 3d? | 2012-08-27 | 2012-08-29 |  | 48d |  | finish no earlier than 2012-08-29 | 唐觅 | 24h |
| 68 | 1.1.6.2 | **活动大纲** |  | 3d? | 2012-08-29 | 2012-08-31 |  | 2d |  |  | 唐觅 | 48h |
| 69 | 1.1.6.2.1 | 初步制定封测活动大纲 |  | 2d? | 2012-08-29 | 2012-08-30 |  | 6d | 0d | finish no earlier than 2012-08-30 | 唐觅 | 16h |
| 70 | 1.1.6.2.2 | 讨论确定大纲内容 | manual | 1d | 2012-08-31 | 2012-08-31 | 69 |  |  | finish no earlier than 2012-08-31 | 全体 | 8h |
| 71 | 1.1.6.3 | **详细活动计划** |  | 4d? | 2012-09-03 | 2012-09-06 |  | 2d |  |  | 唐觅; 全体 | 96h |
| 72 | 1.1.6.3.1 | 细化封测活动计划 |  | 3d? | 2012-09-03 | 2012-09-05 |  | 3d |  | finish no earlier than 2012-09-05 | 唐觅 | 24h |
| 73 | 1.1.6.3.2 | 讨论确定详细活动计划 | manual | 1d | 2012-09-06 | 2012-09-06 |  |  |  | start no earlier than 2012-09-06 | 全体 | 8h |

| ID | WBS | Task | Type | Duration | Start | Finish | Predecessors | Complete | Remaining | Actual start | Total slack | Free slack | Constraint | Resources | Work | Actual work |
| --- | --- | --- | --- | --- | --- | --- | --- | --- | --- | --- | --- | --- | --- | --- | --- | --- |
| 74 | 1.2 | **君王II9月计划** |  | 34d? | 2012-08-27 | 2012-10-10 |  | 1% | 33.66d? | 2012-08-20 |  |  |  | 全体 | 1704h | 13.2h |
| 75 | 1.2.1 | 熟悉君王II游戏内容 |  | 3d? | 2012-08-27 | 2012-08-29 |  |  |  |  | 49d |  | finish no earlier than 2012-08-29 | 卢秀平 | 24h |  |
| 76 | 1.2.2 | **宣传大纲** |  | 5d? | 2012-08-29 | 2012-09-04 |  |  |  |  | 27d |  |  | 卢秀平; 全体 | 120h |  |
| 77 | 1.2.2.1 | 初步制定封测宣传大纲 |  | 2d? | 2012-08-29 | 2012-08-30 |  |  |  |  | 27d | 0d | start no earlier than 2012-08-29 | 卢秀平 | 16h |  |
| 78 | 1.2.2.2 | 讨论确定大纲内容 |  | 1d | 2012-08-31 | 2012-08-31 | 77 |  |  |  | 27d | 0d | finish no earlier than 2012-08-31 | 全体 | 8h |  |
| 79 | 1.2.2.3 | 封测炒作点构思提出 |  | 2d | 2012-09-03 | 2012-09-04 | 78 |  |  |  | 27d |  | start no earlier than 2012-09-03 | 全体 | 16h |  |
| 80 | 1.2.3 | **分类宣传准备工作** |  | 20d? | 2012-08-20 A | 2012-09-14 |  | 2% | 19.67d? |  | 19d |  |  | 卢秀平; 全体 | 984h | 13.2h |
| 81 | 1.2.3.1 | **资源准备** |  | 20d? | 2012-08-20 A | 2012-09-14 |  | 4% | 19.3d? |  | 19d |  |  |  | 384h | 8h |
| 82 | 1.2.3.1.1 | 《君王II》宣传视频制作 | manual | 10d | 2012-08-20 | 2012-08-31 |  |  |  |  |  |  | start no earlier than 2012-08-20 | 冯瑞祥; 石玲燕 | 160h |  |
| 83 | 1.2.3.1.2 | 准备男女主角、场景的原画需求，并安排制作 |  | 6d? | 2012-08-29 | 2012-09-05 |  |  |  |  | 26d |  | finish no earlier than 2012-09-05 | 顾云峰; 冯瑞祥 | 96h |  |
| 84 | 1.2.3.1.3 | 《君王II》著作权申请 | manual | 1d | 2012-08-28 A | 2012-08-28 A |  | 100% |  |  |  |  | finish no earlier than 2012-08-31 | 郝琳 | 8h | 8h |
| 85 | 1.2.3.1.4 | 准备ICON和LOGO需求，并安排制制作 |  | 1d? | 2012-08-27 | 2012-08-27 |  |  |  |  | 33d |  |  | 卢秀平 | 8h |  |
| 86 | 1.2.3.1.5 | 准备封测用宣传截图（假如）需求，并安排制作 |  | 7d? | 2012-09-06 | 2012-09-14 |  |  |  |  | 19d |  | start no earlier than 2012-09-06 | 卢秀平 | 56h |  |
| 87 | 1.2.3.1.6 | 准备专区资料需求，并安排制作（图、文档、攻略、操作说明） |  | 3.5d? | 2012-09-06 | 2012-09-11 |  |  |  |  | 22.5d |  | start no earlier than 2012-09-06 | 卢秀平; 郝斌 | 56h |  |
| 88 | 1.2.3.2 | **官网** |  | 5d | 2012-08-27 | 2012-08-31 |  |  |  |  | 29d |  |  |  | 56h |  |
| 89 | 1.2.3.2.1 | 准备WEB、和WAP官网的制作需求，并安排制作 |  | 2d | 2012-08-27 | 2012-08-28 |  |  |  |  | 29d | 0d | start no earlier than 2012-08-27 | 冯瑞祥; 石玲燕 | 32h |  |
| 90 | 1.2.3.2.2 | 域名申请及备案 |  | 3d | 2012-08-29 | 2012-08-31 | 89 |  |  |  | 29d |  |  | 商务 | 24h |  |
| 91 | 1.2.3.3 | **渠道** |  | 5d? | 2012-08-27 | 2012-08-31 |  |  |  |  | 29d |  |  |  | 56h |  |
| 92 | 1.2.3.3.1 | 商务联系当乐、久游、91、17173、多玩等一线渠道，确定推广位、软文位及渠道活动内容和资源互换条件等内容。 |  | 2d | 2012-08-27 | 2012-08-28 |  |  |  |  | 29d | 0d | start no earlier than 2012-08-27 | 商务 | 16h |  |
| 93 | 1.2.3.3.2 | 根据宣传推广计划，确定专区开设时间。 |  | 3d | 2012-08-29 | 2012-08-31 | 92 |  |  |  | 29d |  |  | 黄佳 | 24h |  |
| 94 | 1.2.3.3.3 | 商务联系其他android、ios和PC的2-3线渠道，争取资源。 |  | 1d? | 2012-08-27 | 2012-08-27 |  |  |  |  | 33d |  |  | 商务 | 8h |  |
| 95 | 1.2.3.3.4 | 配合新闻及活动，确定每个时间点的推广位。 |  | 1d? | 2012-08-27 | 2012-08-27 |  |  |  |  | 33d |  |  | 商务 | 8h |  |
| 96 | 1.2.3.4 | **微博** |  | 15d? | 2012-08-27 | 2012-09-14 |  |  |  |  | 19d |  |  |  | 168h |  |
| 97 | 1.2.3.4.1 | 注册《君王II》官方微博 腾讯、新浪 |  | 2d | 2012-08-27 | 2012-08-28 |  |  |  |  | 29d | 0d | start no earlier than 2012-08-27 | 卢秀平 | 16h |  |
| 98 | 1.2.3.4.2 | 申请微博认证 |  | 3d | 2012-08-29 | 2012-08-31 | 97 |  |  |  | 29d |  |  | 卢秀平 | 24h |  |
| 99 | 1.2.3.4.3 | 购买僵尸粉 |  | 1d? | 2012-08-27 | 2012-08-27 |  |  |  |  | 33d |  |  | 卢秀平 | 8h |  |
| 100 | 1.2.3.4.4 | 专人维护，宣传游戏新闻和活动，并与微博粉丝互动 |  | 15d? | 2012-08-27 | 2012-09-14 |  |  |  |  | 19d |  | finish no earlier than 2012-09-14 | 卢秀平 | 120h |  |

Notes:
- 84: 大概3月左右出证

| ID | WBS | Task | Type | Duration | Start | Finish | Predecessors | Remaining | Total slack | Free slack | Constraint | Resources | Work | Actual work |
| --- | --- | --- | --- | --- | --- | --- | --- | --- | --- | --- | --- | --- | --- | --- |
| 101 | 1.2.4 | **详细宣传计划** |  | 4d? | 2012-09-03 | 2012-09-06 |  |  | 3d |  |  | 卢秀平; 全体 | 96h |  |
| 102 | 1.2.4.1 | 细化封测宣传计划 |  | 3d? | 2012-09-03 | 2012-09-05 |  |  | 25d | 0d | finish no earlier than 2012-09-05 | 卢秀平 | 24h |  |
| 103 | 1.2.4.2 | 讨论确定详细宣传计划 | manual | 1d | 2012-09-06 | 2012-09-06 | 102 |  |  |  | finish no earlier than 2012-09-06 | 全体 | 8h |  |
| 104 | 1.2.5 | **宣传预热** |  | 28d | 2012-09-14 | 2012-10-22 |  |  |  |  |  | 卢秀平 | 216h |  |
| 105 | 1.2.5.1 | 待定 |  | 27d? | 2012-09-17 | 2012-10-22 |  |  | 10d |  | finish no earlier than 2012-10-22 |  |  |  |
| 106 | 1.3 | **神作9月计划** |  | 34d? | 2012-08-27 A | 2012-10-10 |  | 34d? |  |  |  | 全体 | 1384h | 6.5h |
| 107 | 1.3.1 | 熟悉神作游戏内容 |  | 3d? | 2012-08-27 | 2012-08-29 |  |  | 49d |  | finish no earlier than 2012-08-29 | 卢秀平 | 24h |  |
| 108 | 1.3.2 | **宣传详情** |  | 8d? | 2012-08-27 | 2012-09-05 |  |  | 26d |  |  | 卢秀平; 全体 | 168h |  |
| 109 | 1.3.2.1 | 制定封测宣传详情 |  | 4d? | 2012-08-27 | 2012-08-30 |  |  | 29d | 3d | finish no earlier than 2012-08-30 | 卢秀平 | 32h |  |
| 110 | 1.3.2.2 | 讨论确定大纲内容 |  | 1d | 2012-09-05 | 2012-09-05 | 109 |  | 26d |  | finish no earlier than 2012-09-05 | 全体 | 8h |  |
| 111 | 1.3.3 | **分类宣传准备工作** |  | 26d? | 2012-08-27 A | 2012-09-30 |  | 26d? | 8d |  |  | 卢秀平; 全体 | 592h | 6.5h |
| 112 | 1.3.3.1 | **资源准备** |  | 1d? | 2012-08-27 | 2012-08-27 |  |  | 33d |  |  |  | 24h |  |
| 113 | 1.3.3.1.1 | 准备专区资料（截图、游戏资料、操作说明、新手攻略） |  | 1d? | 2012-08-27 | 2012-08-27 |  |  | 33d |  |  | 冯瑞祥 | 8h |  |
| 114 | 1.3.3.1.2 | 准备海量尺寸的ICON和LOGO |  | 1d? | 2012-08-27 | 2012-08-27 |  |  | 33d |  |  | 卢秀平 | 8h |  |
| 115 | 1.3.3.1.3 | 准备游戏截图（超美假图） |  | 1d? | 2012-08-27 | 2012-08-27 |  |  | 33d |  |  | 卢秀平 | 8h |  |
| 116 | 1.3.3.2 | **渠道** |  | 5d? | 2012-08-27 | 2012-08-31 |  |  | 29d |  |  |  | 56h |  |
| 117 | 1.3.3.2.1 | 商务联系当乐、久游、91、17173、多玩等一线渠道，确定推广位、软文位及渠道活动内容和资源互换条件等内容。 |  | 2d | 2012-08-27 | 2012-08-28 |  |  | 29d | 0d | start no earlier than 2012-08-27 | 商务 | 16h |  |
| 118 | 1.3.3.2.2 | 根据宣传推广计划，确定专区开设时间。 |  | 3d | 2012-08-29 | 2012-08-31 | 117 |  | 29d |  |  | 冯瑞祥 | 24h |  |
| 119 | 1.3.3.2.3 | 商务联系其他android、ios和PC的2-3线渠道，争取资源。 |  | 1d? | 2012-08-27 | 2012-08-27 |  |  | 33d |  |  | 商务 | 8h |  |
| 120 | 1.3.3.2.4 | 配合新闻及活动，确定每个时间点的推广位。 |  | 1d? | 2012-08-27 | 2012-08-27 |  |  | 33d |  |  | 商务 | 8h |  |
| 121 | 1.3.3.3 | **微博** |  | 26d? | 2012-08-27 | 2012-09-30 |  |  | 8d |  |  |  | 96h |  |
| 122 | 1.3.3.3.1 | 注册《君王II》官方微博 腾讯、新浪 |  | 2d | 2012-08-27 | 2012-08-28 |  |  | 29d | 0d | start no earlier than 2012-08-27 | 冯瑞祥 | 16h |  |
| 123 | 1.3.3.3.2 | 申请微博认证 |  | 3d | 2012-08-29 | 2012-08-31 | 122 |  | 29d |  |  | 冯瑞祥 | 24h |  |
| 124 | 1.3.3.3.3 | 购买僵尸粉 |  | 1d? | 2012-08-27 | 2012-08-27 |  |  | 33d |  |  | 冯瑞祥 | 8h |  |
| 125 | 1.3.3.3.4 | 专人维护，宣传游戏新闻和活动，并与微博粉丝互动 |  | 6d? | 2012-09-24 | 2012-09-30 |  |  | 8d |  | start no earlier than 2012-09-24 | 卢秀平 | 48h |  |

| ID | WBS | Task | Type | Duration | Start | Finish | Total slack | Constraint | Resources | Work |
| --- | --- | --- | --- | --- | --- | --- | --- | --- | --- | --- |
| 126 | 1.3.4 | **宣传预热** |  | 14d | 2012-09-24 | 2012-10-10 |  |  | 卢秀平; 全体 | 336h |
| 127 | 1.3.4.1 | 待定 |  | 14d? | 2012-09-24 | 2012-10-10 | 18d | finish no earlier than 2012-10-10 | 卢秀平 | 112h |
| 128 | 1.4 | **上古世界9月计划** |  | 34d? | 2012-08-27 | 2012-10-10 |  |  | 全体 | 2624h |
| 129 | 1.4.1 | **外网上古II** |  | 30d? | 2012-08-31 | 2012-10-10 |  |  | 卢秀平; 全体 | 2360h |
| 130 | 1.4.1.1 | **日常软文宣传** |  | 21d? | 2012-08-31 | 2012-09-28 | 0d |  |  | 1512h |
| 131 | 1.4.1.1.1 | 每周四、五制定下周宣传计划（宣传节奏放慢） | manual | 21d | 2012-08-31 | 2012-09-28 |  | start no earlier than 2012-08-31 | 卢秀平 | 168h |
| 132 | 1.4.1.1.2 | 每周五讨论确定下周宣传计划 | manual | 21d | 2012-08-31 | 2012-09-28 |  | start no earlier than 2012-08-31 | 卢秀平; 全体; 施健 | 504h |
| 133 | 1.4.1.1.3 | 每周一提交上周软文位置、点击率 | manual | 21d | 2012-08-31 | 2012-09-28 |  | start no earlier than 2012-08-31 | 邝茹晶 | 168h |
| 134 | 1.4.1.1.4 | 每日软文撰写、位置跟进 |  | 21d? | 2012-08-31 | 2012-09-28 | 9d | finish no earlier than 2012-09-28 | 邝茹晶 | 168h |
| 135 | 1.4.1.1.5 | 每日软文审核修改 |  | 21d? | 2012-08-31 | 2012-09-28 | 9d | finish no earlier than 2012-09-28 | 卢秀平 | 168h |
| 136 | 1.4.1.1.6 | 每日广告图制作 |  | 21d? | 2012-08-31 | 2012-09-28 | 9d | finish no earlier than 2012-09-28 | 邝茹晶 | 168h |
| 137 | 1.4.1.1.7 | UC、当乐、飞流、17sy、官网等渠道新闻后台维护 |  | 21d? | 2012-08-31 | 2012-09-28 | 9d | finish no earlier than 2012-09-28 | 邝茹晶 | 168h |
| 138 | 1.4.1.2 | **微博** |  | 21d | 2012-08-31 | 2012-09-28 |  |  |  | 208h |
| 139 | 1.4.1.2.1 | 每日维护 | manual | 10d | 2012-08-20 | 2012-08-31 |  | start no earlier than 2012-08-20 | 邝茹晶 | 80h |
| 140 | 1.4.1.2.2 | 中元节（鬼节）活动 |  | 4d? | 2012-08-29 | 2012-09-03 | 46d | finish no earlier than 2012-09-03 | 卢秀平 | 32h |
| 141 | 1.4.1.2.3 | 中秋节+国庆节双节活动 |  | 12d? | 2012-08-21 | 2012-09-05 | 44d | finish no earlier than 2012-09-05 | 卢秀平 | 96h |
| 142 | 1.4.1.3 | **日常商务需求满足** |  | 10d | 2012-08-20 | 2012-08-31 | 0d |  |  | 160h |
| 143 | 1.4.1.3.1 | 日常商务需求整理安排 | manual | 10d | 2012-08-20 | 2012-08-31 |  | start no earlier than 2012-08-20 | 邝茹晶; 卢秀平 | 160h |
| 144 | 1.5 | **上古II9月计划** |  | 34d? | 2012-08-27 | 2012-10-10 |  |  | 全体 | 4256h |
| 145 | 1.5.1 | **外网上古II** |  | 30d? | 2012-08-31 | 2012-10-10 |  |  | 卢秀平; 全体 | 2504h |
| 146 | 1.5.1.1 | **日常软文宣传** |  | 21d? | 2012-08-31 | 2012-09-28 | 0d |  |  | 1512h |
| 147 | 1.5.1.1.1 | 每周四、五制定下周宣传计划 | manual | 21d | 2012-08-31 | 2012-09-28 |  | start no earlier than 2012-08-31 | 卢秀平 | 168h |
| 148 | 1.5.1.1.2 | 每周五讨论确定下周宣传计划 | manual | 21d | 2012-08-31 | 2012-09-28 |  | start no earlier than 2012-08-31 | 卢秀平; 全体; 施健 | 504h |
| 149 | 1.5.1.1.3 | 每周一提交上周软文位置、点击率 | manual | 21d | 2012-08-31 | 2012-09-28 |  | start no earlier than 2012-08-31 | 邝茹晶 | 168h |
| 150 | 1.5.1.1.4 | 每日软文撰写、位置跟进 |  | 21d? | 2012-08-31 | 2012-09-28 | 9d | finish no earlier than 2012-09-28 | 邝茹晶 | 168h |
| 151 | 1.5.1.1.5 | 每日软文审核修改 |  | 21d? | 2012-08-31 | 2012-09-28 | 9d | finish no earlier than 2012-09-28 | 卢秀平 | 168h |
| 152 | 1.5.1.1.6 | 每日广告图制作 |  | 21d? | 2012-08-31 | 2012-09-28 | 9d | finish no earlier than 2012-09-28 | 邝茹晶 | 168h |
| 153 | 1.5.1.1.7 | UC、当乐、飞流、17sy、官网等渠道新闻后台维护 |  | 21d? | 2012-08-31 | 2012-09-28 | 9d | finish no earlier than 2012-09-28 | 邝茹晶 | 168h |

| ID | WBS | Task | Type | Duration | Start | Finish | Predecessors | Complete | Remaining | Actual start | Total slack | Free slack | Constraint | Resources | Work | Actual work |
| --- | --- | --- | --- | --- | --- | --- | --- | --- | --- | --- | --- | --- | --- | --- | --- | --- |
| 154 | 1.5.1.2 | **微博** |  | 21d | 2012-08-31 | 2012-09-28 |  |  |  |  |  |  |  |  | 176h |  |
| 155 | 1.5.1.2.1 | 每日维护 | manual | 10d | 2012-08-20 | 2012-08-31 |  |  |  |  |  |  | start no earlier than 2012-08-20 | 邝茹晶 | 80h |  |
| 156 | 1.5.1.2.2 | 中秋节+国庆节双节活动 |  | 12d? | 2012-08-21 | 2012-09-05 |  |  |  |  | 44d |  | finish no earlier than 2012-09-05 | 卢秀平 | 96h |  |
| 157 | 1.5.1.3 | **日常商务需求满足** |  | 21d | 2012-09-03 | 2012-09-30 |  |  |  |  | 0d |  |  |  | 336h |  |
| 158 | 1.5.1.3.1 | 日常商务需求整理安排 | manual | 21d | 2012-09-03 | 2012-09-30 |  |  |  |  |  |  | start no earlier than 2012-09-03 | 邝茹晶; 卢秀平 | 336h |  |
| 159 | 1.5.2 | **腾讯上古II** |  | 36d | 2012-08-13 | 2012-09-30 |  |  |  |  | 0d |  |  | 卢秀平; 全体 | 1488h |  |
| 160 | 1.5.2.1 | **每周软文宣传** |  | 22d | 2012-08-31 | 2012-09-30 |  |  |  |  |  |  |  |  | 344h |  |
| 161 | 1.5.2.1.1 | 每周五确定下周宣传计划 | manual | 22d | 2012-08-31 | 2012-09-30 |  |  |  |  |  |  | start no earlier than 2012-08-31 | 卢秀平 | 176h |  |
| 162 | 1.5.2.1.2 | 每周两篇软文撰写、微博更新 |  | 21d? | 2012-09-03 | 2012-09-30 |  |  |  |  | 26d |  | finish no earlier than 2012-09-30 | 邝茹晶 | 168h |  |
| 163 | 1.5.2.2 | **上半月推广** |  | 11d | 2012-08-13 | 2012-08-25 |  |  |  |  |  |  |  | 卢秀平 | 432h |  |
| 164 | 1.5.2.2.1 | PUSH短消息推广 |  | 10d | 2012-08-13 | 2012-08-24 |  |  |  |  | 52d |  | finish no earlier than 2012-08-24 | 邝茹晶; 卢秀平 | 160h |  |
| 165 | 1.5.2.2.2 | QQ客户端图片推广 |  | 5d | 2012-08-20 | 2012-08-24 |  |  |  |  | 52d |  | finish no earlier than 2012-08-24 | 卢秀平; 邝茹晶 | 80h |  |
| 166 | 1.5.2.2.3 | 广告语位置推广 |  | 5d | 2012-08-20 | 2012-08-24 |  |  |  |  | -1.5d | 0d | finish no earlier than 2012-08-24 | 卢秀平; 邝茹晶 | 80h |  |
| 167 | 1.5.2.2.4 | 推广效果数据需求、总结 |  | 1.5d | 2012-08-27 | 2012-08-28 | 166 |  |  |  | -1.5d | 0d |  | 卢秀平; 张懿 | 24h |  |
| 168 | 1.5.2.3 | **下半月推广** |  | 6d | 2012-09-03 | 2012-09-10 |  |  |  |  |  |  |  | 卢秀平 | 152h |  |
| 169 | 1.5.2.3.1 | PUSH短消息推广 |  | 2d | 2012-08-27 | 2012-08-28 |  |  |  |  | 6d | 3d | start no earlier than 2012-08-27 | 卢秀平; 邝茹晶 | 32h |  |
| 170 | 1.5.2.3.2 | QQ客户端图片推广 |  | 1.5d | 2012-09-03 | 2012-09-04 | 169 |  |  |  | 3d | 0d |  | 卢秀平; 邝茹晶 | 24h |  |
| 171 | 1.5.2.3.3 | 广告语位置推广 |  | 1.5d | 2012-09-04 | 2012-09-05 | 170 |  |  |  | 3d |  |  | 卢秀平; 邝茹晶 | 24h |  |
| 172 | 1.5.2.3.4 | 推广效果数据需求、总结 |  | 1.5d | 2012-09-03 | 2012-09-04 |  |  |  |  | 4.5d |  |  | 卢秀平; 张懿 | 24h |  |
| 173 | 1.6 | **君王OL9月计划** |  | 34d? | 2012-08-27 | 2012-10-10 |  | 1% | 33.54d? | 2012-08-20 |  |  |  | 全体 | 1320h | 13.62h |
| 174 | 1.6.1 | 熟悉君王II游戏内容 |  | 3d? | 2012-08-27 | 2012-08-29 |  |  |  |  | 49d |  | finish no earlier than 2012-08-29 | 卢秀平 | 24h |  |
| 175 | 1.6.2 | **宣传大纲** |  | 3d? | 2012-08-29 | 2012-08-31 |  |  |  |  | 29d |  |  | 卢秀平; 全体 | 72h |  |
| 176 | 1.6.2.1 | 初步制定封测宣传大纲 |  | 2d? | 2012-08-29 | 2012-08-30 |  |  |  |  | 29d | 0d | start no earlier than 2012-08-29 | 卢秀平 | 16h |  |
| 177 | 1.6.2.2 | 讨论确定大纲内容 |  | 1d | 2012-08-31 | 2012-08-31 | 176 |  |  |  | 29d |  | finish no earlier than 2012-08-31 | 全体 | 8h |  |

Notes:
- 163: 腾讯9月上半月推广资料提交日：8月25日前
- 168: 腾讯9月下半月推广资料提交日：9月10日

| ID | WBS | Task | Type | Duration | Start | Finish | Predecessors | Complete | Remaining | Total slack | Free slack | Constraint | Resources | Work | Actual work |
| --- | --- | --- | --- | --- | --- | --- | --- | --- | --- | --- | --- | --- | --- | --- | --- |
| 178 | 1.6.3 | **分类宣传准备工作** |  | 13d? | 2012-08-20 A | 2012-09-05 |  | 3% | 12.65d? | 26d |  |  | 卢秀平; 全体 | 648h | 13.62h |
| 179 | 1.6.3.1 | **资源准备** |  | 13d? | 2012-08-20 A | 2012-09-05 |  | 6% | 12.28d? | 26d |  |  |  | 272h | 8h |
| 180 | 1.6.3.1.1 | 《君王II》宣传视频制作 | manual | 10d | 2012-08-20 | 2012-08-31 |  |  |  |  |  | start no earlier than 2012-08-20 | 冯瑞祥; 石玲燕 | 160h |  |
| 181 | 1.6.3.1.2 | 准备男女主角、场景的原画需求，并安排制作 |  | 6d? | 2012-08-29 | 2012-09-05 |  |  |  | 26d |  | finish no earlier than 2012-09-05 | 顾云峰; 冯瑞祥 | 96h |  |
| 182 | 1.6.3.1.3 | 《君王II》著作权申请 | manual | 1d | 2012-08-28 A | 2012-08-28 A |  | 100% |  |  |  | finish no earlier than 2012-08-31 | 郝琳 | 8h | 8h |
| 183 | 1.6.3.1.4 | 准备ICON和LOGO需求，并安排制制作 |  | 1d? | 2012-08-27 | 2012-08-27 |  |  |  | 33d |  |  | 卢秀平 | 8h |  |
| 184 | 1.6.3.2 | **官网** |  | 5d | 2012-08-27 | 2012-08-31 |  |  |  | 29d |  |  |  | 56h |  |
| 185 | 1.6.3.2.1 | 准备WEB、和WAP官网的制作需求，并安排制作 |  | 2d | 2012-08-27 | 2012-08-28 |  |  |  | 29d | 0d | start no earlier than 2012-08-27 | 冯瑞祥; 石玲燕 | 32h |  |
| 186 | 1.6.3.2.2 | 域名申请及备案 |  | 3d | 2012-08-29 | 2012-08-31 | 185 |  |  | 29d |  |  | 商务 | 24h |  |
| 187 | 1.6.3.3 | **渠道** |  | 5d? | 2012-08-27 | 2012-08-31 |  |  |  | 29d |  |  |  | 56h |  |
| 188 | 1.6.3.3.1 | 商务联系当乐、久游、91、17173、多玩等一线渠道，确定推广位、软文位及渠道活动内容和资源互换条件等内容。 |  | 2d | 2012-08-27 | 2012-08-28 |  |  |  | 29d | 0d | start no earlier than 2012-08-27 | 商务 | 16h |  |
| 189 | 1.6.3.3.2 | 根据宣传推广计划，确定专区开设时间。 |  | 3d | 2012-08-29 | 2012-08-31 | 188 |  |  | 29d |  |  | 黄佳 | 24h |  |
| 190 | 1.6.3.3.3 | 商务联系其他android、ios和PC的2-3线渠道，争取资源。 |  | 1d? | 2012-08-27 | 2012-08-27 |  |  |  | 33d |  |  | 商务 | 8h |  |
| 191 | 1.6.3.3.4 | 配合新闻及活动，确定每个时间点的推广位。 |  | 1d? | 2012-08-27 | 2012-08-27 |  |  |  | 33d |  |  | 商务 | 8h |  |
| 192 | 1.6.3.4 | **微博** |  | 5d? | 2012-08-27 | 2012-08-31 |  |  |  | 29d |  |  |  | 56h |  |
| 193 | 1.6.3.4.1 | 注册《君王II》官方微博 腾讯、新浪 |  | 2d | 2012-08-27 | 2012-08-28 |  |  |  | 29d | 0d | start no earlier than 2012-08-27 | 卢秀平 | 16h |  |
| 194 | 1.6.3.4.2 | 申请微博认证 |  | 3d | 2012-08-29 | 2012-08-31 | 193 |  |  | 29d |  |  | 卢秀平 | 24h |  |
| 195 | 1.6.3.4.3 | 购买僵尸粉 |  | 1d? | 2012-08-27 | 2012-08-27 |  |  |  | 33d |  |  | 卢秀平 | 8h |  |
| 196 | 1.6.3.4.4 | 专人维护，宣传游戏新闻和活动，并与微博粉丝互动 |  | 1d? | 2012-08-27 | 2012-08-27 |  |  |  | 33d |  |  | 卢秀平 | 8h |  |
| 197 | 1.6.4 | **详细宣传计划** |  | 4d? | 2012-09-03 | 2012-09-06 |  |  |  | 3d |  |  | 卢秀平; 全体 | 96h |  |
| 198 | 1.6.4.1 | 细化封测宣传计划 |  | 3d? | 2012-09-03 | 2012-09-05 |  |  |  | 25d | 0d | finish no earlier than 2012-09-05 | 卢秀平 | 24h |  |
| 199 | 1.6.4.2 | 讨论确定详细宣传计划 | manual | 1d | 2012-09-06 | 2012-09-06 | 198 |  |  |  |  | finish no earlier than 2012-09-06 | 全体 | 8h |  |
| 200 | 1.6.5 | **宣传预热** |  | 28d | 2012-09-14 | 2012-10-22 |  |  |  |  |  |  | 卢秀平 | 216h |  |
| 201 | 1.6.5.1 | 待定 |  | 27d? | 2012-09-17 | 2012-10-22 |  |  |  | 10d |  | finish no earlier than 2012-10-22 |  |  |  |

Notes:
- 182: 大概3月左右出证

| ID | WBS | Task | Type | Duration | Start | Finish | Predecessors | Total slack | Free slack | Constraint | Resources | Work |
| --- | --- | --- | --- | --- | --- | --- | --- | --- | --- | --- | --- | --- |
| 202 | 1.7 | **叮叮堂9月计划** |  | 34d? | 2012-08-27 | 2012-10-10 |  |  |  |  | 全体 | 1736h |
| 203 | 1.7.1 | 熟悉叮叮堂内测游戏内容 |  | 3d? | 2012-08-27 | 2012-08-29 |  | 49d |  | finish no earlier than 2012-08-29 | 卢秀平 | 24h |
| 204 | 1.7.2 | **日常软文宣传** |  | 22d? | 2012-08-31 | 2012-09-30 |  | 0d |  |  |  | 1368h |
| 205 | 1.7.2.1 | 每周四、五制定下周宣传计划 | manual | 22d | 2012-08-31 | 2012-09-30 |  |  |  | start no earlier than 2012-08-31 | 贾琳 | 176h |
| 206 | 1.7.2.2 | 每周五讨论确定下周宣传计划 | manual | 22d | 2012-08-31 | 2012-09-30 |  |  |  | start no earlier than 2012-08-31 | 卢秀平; 孟祥磊 | 352h |
| 207 | 1.7.2.3 | 每周一提交上周软文位置、点击率 | manual | 21d | 2012-08-31 | 2012-09-28 |  |  |  | start no earlier than 2012-08-31 | 贾琳 | 168h |
| 208 | 1.7.2.4 | 每日软文撰写、位置跟进 |  | 21d? | 2012-08-31 | 2012-09-28 |  | 9d |  | finish no earlier than 2012-09-28 | 贾琳 | 168h |
| 209 | 1.7.2.5 | 每日软文审核修改 |  | 21d? | 2012-08-31 | 2012-09-28 |  | 9d |  | finish no earlier than 2012-09-28 | 卢秀平 | 168h |
| 210 | 1.7.2.6 | 每日广告图制作 |  | 21d? | 2012-08-31 | 2012-09-28 |  | 9d |  | finish no earlier than 2012-09-28 | 贾琳 | 168h |
| 211 | 1.7.2.7 | UC、当乐、飞流、17sy、官网等渠道新闻后台维护 |  | 21d? | 2012-08-31 | 2012-09-28 |  | 9d |  | finish no earlier than 2012-09-28 | 贾琳 | 168h |
| 212 | 1.7.3 | **内测宣传** |  | 3d? | 2012-08-29 | 2012-08-31 |  | 29d |  |  | 卢秀平; 全体 | 80h |
| 213 | 1.7.3.1 | 初步制定内测宣传大纲 |  | 2d? | 2012-08-29 | 2012-08-30 |  | 29d | 0d | start no earlier than 2012-08-29 | 卢秀平 | 16h |
| 214 | 1.7.3.2 | 讨论确定大纲内容 |  | 1d | 2012-08-31 | 2012-08-31 | 213 | 29d |  | finish no earlier than 2012-08-31 | 全体 | 8h |
| 215 | 1.7.3.3 | 制定内测详细宣传计划 |  | 1d | 2012-08-31 | 2012-08-31 |  | 29d |  | finish no earlier than 2012-08-31 | 全体 | 8h |
